Schedule from MS Project, 2016-12-26 to 2017-05-17.
Microsoft

## Calendars

- 标准: Mon-Fri 08:00-12:00, 13:00-17:00; Sat-Sun off. Exceptions (off unless hours are given): 2017-01-02 (元旦), 2017-01-07 to 2022-10-22 08:00-12:00, 13:00-17:00 (单双休, recurring), 2017-01-27 to 2017-02-02 (过年).

## Resources

| Resource |
| --- |
| 文玉杰 |
| 李丁 |
| 杨忠卫 |
| 刘飞 |
| 胡东 |
| 杨绍振 |

## Schedule

| ID | WBS | Task | Type | Duration | Start | Finish | Predecessors | Total slack | Free slack | Constraint | Resources | Work |
| --- | --- | --- | --- | --- | --- | --- | --- | --- | --- | --- | --- | --- |
| 1 | 1 | **安卓，ios接口改造** |  | 22d | 2016-12-29 | 2017-02-02 |  |  |  |  | 李丁; 杨忠卫 | 1688h |
| 2 | 1.1 | 安卓，ios接口改造 | manual | 22d | 2016-12-29 | 2017-02-02 |  |  |  | start no earlier than 2016-12-29 | 李丁; 杨忠卫 | 352h |
| 3 | 1.2 | **安卓，ios接口改造** |  | 22d | 2016-12-29 | 2017-02-02 |  |  |  |  | 李丁; 杨忠卫 | 984h |
| 4 | 1.2.1 | **登陆注册相关接口** |  | 4d | 2016-12-29 | 2017-01-05 |  | 3.88d | 0d |  | 李丁 | 64h |
| 5 | 1.2.1.1 | 登陆接口重写及测试 |  | 1d | 2016-12-29 | 2016-12-30 |  | 3.88d | 0d |  | 李丁 | 8h |
| 6 | 1.2.1.2 | 注册接口重写及测试 |  | 1d | 2016-12-30 | 2017-01-03 | 5 | 3.88d | 0d |  | 李丁 | 8h |
| 7 | 1.2.1.3 | 忘记密码接口重写及测试 |  | 1d | 2017-01-03 | 2017-01-04 | 6 | 3.88d | 0d |  | 李丁 | 8h |
| 8 | 1.2.1.4 | 发送短信及验证码相关接口 |  | 1d | 2017-01-04 | 2017-01-05 | 7 | 3.88d |  |  | 李丁 | 8h |
| 9 | 1.2.2 | **app首页接口** |  | 5d | 2017-01-05 | 2017-01-11 | 7, 4 | 3.88d | 0d |  | 李丁 | 104h |
| 10 | 1.2.2.1 | 首页轮播图接口重写及测试 |  | 1d | 2017-01-05 | 2017-01-06 |  | 5.88d | 0d |  | 李丁 | 8h |
| 11 | 1.2.2.2 | 新品抢先接口重写及测试 |  | 1d | 2017-01-06 | 2017-01-07 | 10 | 5.88d | 0d |  | 李丁 | 8h |
| 12 | 1.2.2.3 | 省钱趴接口重写及测试 |  | 1d | 2017-01-07 | 2017-01-09 | 11 | 5.88d |  |  | 李丁 | 8h |
| 13 | 1.2.2.4 | 每日上线接口重写及测试 |  | 1d | 2017-01-05 | 2017-01-06 |  | 3.88d | 0d |  | 李丁 | 8h |
| 14 | 1.2.2.5 | 超实惠接口重写及测试 |  | 1d | 2017-01-06 | 2017-01-07 | 13 | 3.88d | 0d |  | 李丁 | 8h |
| 15 | 1.2.2.6 | 大牌秀接口重写及测试 |  | 1d | 2017-01-07 | 2017-01-09 | 14 | 3.88d | 0d |  | 李丁 | 8h |
| 16 | 1.2.2.7 | 特色好货接口重写及测试 |  | 1d | 2017-01-09 | 2017-01-10 | 15 | 3.88d | 0d |  | 李丁 | 8h |
| 17 | 1.2.2.8 | 为你推荐接口重写及测试 |  | 1d | 2017-01-10 | 2017-01-11 | 16 | 3.88d | 0d |  | 李丁 | 8h |
| 18 | 1.2.3 | **专题活动页面接口** |  | 4d | 2017-01-11 | 2017-01-17 | 17, 9 | 3.88d | 0d |  | 李丁 | 64h |
| 19 | 1.2.3.1 | 活动页面商品展示接口重写及测试 |  | 2d | 2017-01-11 | 2017-01-13 |  | 3.88d | 0d |  | 李丁 | 16h |
| 20 | 1.2.3.2 | 秒杀与限时抢活动相关接口 |  | 1d | 2017-01-13 | 2017-01-16 | 19 | 3.88d | 0d |  | 李丁 | 8h |
| 21 | 1.2.3.3 | 活动页面按字段排序接口重写及测试 |  | 1d | 2017-01-16 | 2017-01-17 | 19, 20 | 3.88d |  |  | 李丁 | 8h |
| 22 | 1.2.4 | **分类接口** |  | 2d | 2017-01-17 | 2017-01-19 | 18 | 3.88d | 0d |  | 李丁 | 32h |
| 23 | 1.2.4.1 | 分类展示接口 |  | 1d | 2017-01-17 | 2017-01-18 |  | 3.88d | 0d |  | 李丁 | 8h |
| 24 | 1.2.4.2 | 跨境专区分类特别展示接口 |  | 1d | 2017-01-18 | 2017-01-19 | 23 | 3.88d |  |  | 李丁 | 8h |

| ID | WBS | Task | Duration | Start | Finish | Predecessors | Total slack | Free slack | Resources | Work |
| --- | --- | --- | --- | --- | --- | --- | --- | --- | --- | --- |
| 25 | 1.2.5 | **搜索接口** | 3d | 2017-01-19 | 2017-01-23 | 22 | 3.88d |  | 李丁 | 48h |
| 26 | 1.2.5.1 | 首页搜索查询接口 | 1d | 2017-01-19 | 2017-01-20 |  | 3.88d | 0d | 李丁 | 8h |
| 27 | 1.2.5.2 | 类目下搜索查询接口 | 2d | 2017-01-20 | 2017-01-23 | 26 | 3.88d |  | 李丁 | 16h |
| 28 | 1.2.6 | **商品列表页相关接口** | 7d | 2017-01-06 | 2017-01-16 |  |  |  | 杨忠卫 | 112h |
| 29 | 1.2.6.1 | 商品列表展示及分页接口 | 1d | 2017-01-06 | 2017-01-07 |  | -3.12d | 0d | 杨忠卫 | 8h |
| 30 | 1.2.6.2 | 商品详情页相关接口 | 1d | 2017-01-07 | 2017-01-09 | 29 | -3.12d | 0d | 杨忠卫 | 8h |
| 31 | 1.2.6.3 | 商品基础信息相关接口 | 1d | 2017-01-09 | 2017-01-10 | 30 | -3.12d | 0d | 杨忠卫 | 8h |
| 32 | 1.2.6.4 | 商品参数选择及库存数量相关接口 | 1d | 2017-01-10 | 2017-01-11 | 31 | -3.12d | 0d | 杨忠卫 | 8h |
| 33 | 1.2.6.5 | 商品参与活动及优惠金额相关接口 | 1d | 2017-01-11 | 2017-01-12 | 32 | -3.12d | 0d | 杨忠卫 | 8h |
| 34 | 1.2.6.6 | 商品主副图片轮播展示相关接口 | 0.5d | 2017-01-12 | 2017-01-12 | 33 | -3.12d | 0d | 杨忠卫 | 4h |
| 35 | 1.2.6.7 | 商品详细介绍相关接口 | 0.5d | 2017-01-12 | 2017-01-13 | 34 | -3.12d | 0d | 杨忠卫 | 4h |
| 36 | 1.2.6.8 | 商品跳转至订单结算相关接口 | 0.5d | 2017-01-13 | 2017-01-13 | 35 | -3.12d | 0d | 杨忠卫 | 4h |
| 37 | 1.2.6.9 | 商品售后信息相关接口 | 0.5d | 2017-01-13 | 2017-01-16 | 36 | -3.12d | 0d | 杨忠卫 | 4h |
| 38 | 1.2.7 | **购物车相关接口** | 3d | 2017-01-16 | 2017-01-19 | 37, 28 | -3.12d | 0d | 杨忠卫 | 48h |
| 39 | 1.2.7.1 | 购物车权限控制 | 1d | 2017-01-16 | 2017-01-17 |  | -3.12d | 0d | 杨忠卫 | 8h |
| 40 | 1.2.7.2 | 购物车加入功能 | 0.5d | 2017-01-17 | 2017-01-17 | 39 | -3.12d | 0d | 杨忠卫 | 4h |
| 41 | 1.2.7.3 | 购物车编辑相关功能 | 0.5d | 2017-01-17 | 2017-01-18 | 40 | -3.12d | 0d | 杨忠卫 | 4h |
| 42 | 1.2.7.4 | 购物车下推荐商品相关接口 | 0.5d | 2017-01-18 | 2017-01-18 | 41 | -3.12d | 0d | 杨忠卫 | 4h |
| 43 | 1.2.7.5 | 购物车跳转至订单页相关接口 | 0.5d | 2017-01-18 | 2017-01-19 | 42 | -3.12d | 0d | 杨忠卫 | 4h |
| 44 | 1.2.8 | **订单相关接口** | 7.5d | 2017-01-19 | 2017-02-03 | 38 | -3.12d | 0d | 杨忠卫 | 120h |
| 45 | 1.2.8.1 | 订单结算页相关接口 | 1d | 2017-01-19 | 2017-01-20 |  | -3.12d | 0d | 杨忠卫 | 8h |
| 46 | 1.2.8.2 | 查看订单相关接口 | 1d | 2017-01-20 | 2017-01-21 | 45 | -3.12d | 0d | 杨忠卫 | 8h |
| 47 | 1.2.8.3 | 订单查询物流相关接口 | 1d | 2017-01-21 | 2017-01-23 | 46 | -3.12d | 0d | 杨忠卫 | 8h |
| 48 | 1.2.8.4 | 支付订单接口 | 2d | 2017-01-23 | 2017-01-25 | 47 | -3.12d | 0d | 杨忠卫 | 16h |
| 49 | 1.2.8.5 | 订单退换货相关接口 | 1.5d | 2017-01-25 | 2017-01-26 | 48 | -3.12d | 0d | 杨忠卫 | 12h |
| 50 | 1.2.8.6 | 订单确认相关接口 | 0.5d | 2017-01-26 | 2017-02-03 | 49 | -3.12d | 0d | 杨忠卫 | 4h |
| 51 | 1.2.8.7 | 确认收货相关接口 | 0.5d | 2017-02-03 | 2017-02-03 | 50 | -3.12d | 0d | 杨忠卫 | 4h |

| ID | WBS | Task | Duration | Start | Finish | Predecessors | Total slack | Free slack | Resources | Work |
| --- | --- | --- | --- | --- | --- | --- | --- | --- | --- | --- |
| 52 | 1.2.9 | **地址管理相关接口** | 2.5d | 2017-02-03 | 2017-02-07 | 44 | -3.12d | 0d | 杨忠卫 | 40h |
| 53 | 1.2.9.1 | 新增地址相关接口 | 0.5d | 2017-02-03 | 2017-02-04 |  | -3.12d | 0d | 杨忠卫 | 4h |
| 54 | 1.2.9.2 | 修改地址相关接口 | 0.5d | 2017-02-04 | 2017-02-04 | 53 | -3.12d | 0d | 杨忠卫 | 4h |
| 55 | 1.2.9.3 | 删除地址相关接口 | 0.5d | 2017-02-04 | 2017-02-06 | 54 | -3.12d | 0d | 杨忠卫 | 4h |
| 56 | 1.2.9.4 | 默认地址设置相关接口 | 0.5d | 2017-02-06 | 2017-02-06 | 55 | -3.12d | 0d | 杨忠卫 | 4h |
| 57 | 1.2.9.5 | 地址与订单关联接口 | 0.5d | 2017-02-06 | 2017-02-07 | 56 | -3.12d | 0d | 杨忠卫 | 4h |
| 58 | 2 | **他她乐PC端网站** | 86.5d | 2016-12-29 | 2017-04-26 |  | 0d |  | 刘飞; 文玉杰 | 3736h |
| 59 | 2.1 | **前端框架搭建** | 16d | 2016-12-29 | 2017-01-20 |  |  |  | 刘飞 | 256h |
| 60 | 2.1.1 | angularJs搭建 | 2d | 2016-12-29 | 2017-01-03 |  | 0d |  | 刘飞 | 16h |
| 61 | 2.1.2 | 浏览器兼容性处理 | 3d | 2017-01-03 | 2017-01-06 | 60 | 0d |  | 刘飞 | 24h |
| 62 | 2.1.3 | 分辨率兼容性处理 | 3d | 2017-01-06 | 2017-01-10 | 61 | 0d |  | 刘飞 | 24h |
| 63 | 2.1.4 | 模块化公共组件搭建 | 2d | 2017-01-10 | 2017-01-12 | 62 | 0d |  | 刘飞 | 16h |
| 64 | 2.1.5 | 数据渲染框架选型 | 2d | 2017-01-12 | 2017-01-16 | 63 | 0d |  | 刘飞 | 16h |
| 65 | 2.1.6 | 模块化及路由设置封装 | 2d | 2017-01-16 | 2017-01-18 | 64 | 0d |  | 刘飞 | 16h |
| 66 | 2.1.7 | 统一面向AOP过滤处理 | 2d | 2017-01-18 | 2017-01-20 | 65 | 0d |  | 刘飞 | 16h |
| 67 | 2.2 | **首页** | 6d | 2017-01-20 | 2017-02-03 | 59 | 17d | 0d | 刘飞 | 96h |
| 68 | 2.2.1 | TOP项部功能 | 1.5d | 2017-01-20 | 2017-01-21 |  | 12.5d | 0d | 刘飞 | 12h |
| 69 | 2.2.2 | 首页BANNER图展示 | 1d | 2017-01-21 | 2017-01-23 | 68 | 12.5d | 0d | 刘飞 | 8h |
| 70 | 2.2.3 | 导航 | 1d | 2017-01-23 | 2017-01-24 | 69 | 12.5d | 0d | 刘飞 | 8h |
| 71 | 2.2.4 | 商品分类分层导航展示 | 1d | 2017-01-24 | 2017-01-25 | 70 | 12.5d | 0d | 刘飞 | 8h |
| 72 | 2.2.5 | 尾部功能 | 1.5d | 2017-01-25 | 2017-02-03 | 71 | 12.5d | 0d | 刘飞 | 12h |
| 73 | 2.3 | **商品及活动分类页** | 4d | 2017-02-03 | 2017-02-08 | 67 | 17d | 0d | 刘飞 | 64h |
| 74 | 2.3.1 | 居家生活、个护美妆、母婴用品、家电数码、今日限时购（秒杀） | 2d | 2017-02-03 | 2017-02-06 | 72 | 12.5d | 0d | 刘飞 | 16h |
| 75 | 2.3.2 | 每日上新、省钱趴、团购 、其它二级分类页 | 2d | 2017-02-06 | 2017-02-08 | 74 | 12.5d |  | 刘飞 | 16h |

| ID | WBS | Task | Duration | Start | Finish | Predecessors | Total slack | Free slack | Resources | Work |
| --- | --- | --- | --- | --- | --- | --- | --- | --- | --- | --- |
| 76 | 2.4 | **商品详情展示与购买** | 12d | 2017-02-08 | 2017-02-23 | 73 | 17d | 0d | 刘飞 | 192h |
| 77 | 2.4.1 | 商品主标题、商品副标题展示、商品促销信息展示 | 2d | 2017-02-08 | 2017-02-10 |  | 12.5d | 0d | 刘飞 | 16h |
| 78 | 2.4.2 | 商品服务支持展示、商品参数信息 | 2d | 2017-02-10 | 2017-02-14 | 77 | 12.5d | 0d | 刘飞 | 16h |
| 79 | 2.4.3 | 商品购买、加入购物车、商品收藏、同类型商品推荐 | 2d | 2017-02-14 | 2017-02-16 | 78 | 12.5d | 0d | 刘飞 | 16h |
| 80 | 2.4.4 | 所属店铺信息展示 （店铺名称，联系客服、进入店铺） | 2d | 2017-02-16 | 2017-02-18 | 79 | 12.5d | 0d | 刘飞 | 16h |
| 81 | 2.4.5 | 商品评价展示 | 2d | 2017-02-18 | 2017-02-21 | 80 | 12.5d | 0d | 刘飞 | 16h |
| 82 | 2.4.6 | 商品详情、商品参数规格、售后服务信息 | 2d | 2017-02-21 | 2017-02-23 | 81 | 12.5d | 0d | 刘飞 | 16h |
| 83 | 2.5 | **支付** | 7d | 2017-02-23 | 2017-03-04 | 76 | 17d | 0d | 刘飞 | 112h |
| 84 | 2.5.1 | 银联支付 | 2d | 2017-02-23 | 2017-02-27 | 82 | 12.5d | 0d | 刘飞 | 16h |
| 85 | 2.5.2 | 支付宝支付 （扫码支付） | 2.5d | 2017-02-27 | 2017-03-01 | 84 | 12.5d | 0d | 刘飞 | 20h |
| 86 | 2.5.3 | 微信支付 （扫码支付） | 2.5d | 2017-03-01 | 2017-03-04 | 85 | 12.5d | 0d | 刘飞 | 20h |
| 87 | 2.6 | **个人中心** | 13.5d | 2017-03-04 | 2017-03-21 | 83 | 17d | 0d | 刘飞 | 216h |
| 88 | 2.6.1 | 我的个人信息管理（头像、昵称、生日等） | 2.5d | 2017-03-04 | 2017-03-07 | 86 | 12.5d | 0d | 刘飞 | 20h |
| 89 | 2.6.2 | 会员等级 （会员等级，成长值） | 2d | 2017-03-07 | 2017-03-09 | 88 | 12.5d | 0d | 刘飞 | 16h |
| 90 | 2.6.3 | 我的收藏 | 1.5d | 2017-03-09 | 2017-03-13 | 89 | 12.5d | 0d | 刘飞 | 12h |
| 91 | 2.6.4 | 收货地址 | 1.5d | 2017-03-13 | 2017-03-14 | 90 | 12.5d | 0d | 刘飞 | 12h |
| 92 | 2.6.5 | 订单中心 | 1.5d | 2017-03-14 | 2017-03-16 | 91 | 12.5d | 0d | 刘飞 | 12h |
| 93 | 2.6.6 | 账户中心（账户余额，优惠劵，乐币） | 2.5d | 2017-03-16 | 2017-03-18 | 92 | 12.5d | 0d | 刘飞 | 20h |
| 94 | 2.6.7 | 安全设置 (登录密码管理、支付密码、电话号码验证、邮箱验证等) | 2d | 2017-03-18 | 2017-03-21 | 93 | 12.5d |  | 刘飞 | 16h |
| 95 | 2.7 | 帮助中心 | 2d | 2017-03-21 | 2017-03-23 | 87 | 12.5d | 0d | 刘飞 | 16h |
| 96 | 2.8 | **优惠券** | 7.5d | 2017-03-23 | 2017-04-03 | 95 | 17d | 0d | 刘飞 | 120h |
| 97 | 2.8.1 | 优惠劵种类管理 | 2d | 2017-03-23 | 2017-03-27 | 95 | 12.5d | 0d | 刘飞 | 16h |
| 98 | 2.8.2 | 优惠劵管理（添加，编辑，查询，删除） | 2d | 2017-03-27 | 2017-03-29 | 97 | 12.5d | 0d | 刘飞 | 16h |
| 99 | 2.8.3 | 优惠劵配置与发放管理（配置、审核、发放） | 2.5d | 2017-03-29 | 2017-04-01 | 98 | 12.5d | 0d | 刘飞 | 20h |
| 100 | 2.8.4 | 店铺优惠劵的查看与管理 | 1d | 2017-04-01 | 2017-04-03 | 99 | 12.5d | 0d | 刘飞 | 8h |

| ID | WBS | Task | Duration | Start | Finish | Predecessors | Total slack | Free slack | Constraint | Resources | Work |
| --- | --- | --- | --- | --- | --- | --- | --- | --- | --- | --- | --- |
| 101 | 2.9 | **系统管理** | 3.5d | 2017-04-03 | 2017-04-06 | 96 | 17d | 0d |  | 刘飞 | 56h |
| 102 | 2.9.1 | 站点设置 | 1d | 2017-04-03 | 2017-04-04 | 100 | 12.5d | 0d |  | 刘飞 | 8h |
| 103 | 2.9.2 | 行政地区设置 | 1d | 2017-04-04 | 2017-04-05 | 102 | 12.5d | 0d |  | 刘飞 | 8h |
| 104 | 2.9.3 | 物流配送优化 | 1.5d | 2017-04-05 | 2017-04-06 | 103 | 12.5d | 0d |  | 刘飞 | 12h |
| 105 | 2.10 | **商品评论管理** | 8d | 2017-04-06 | 2017-04-17 | 101 | 17d | 0d |  | 刘飞 | 128h |
| 106 | 2.10.1 | 评论规则设置 | 2d | 2017-04-06 | 2017-04-10 | 104 | 12.5d | 0d |  | 刘飞 | 16h |
| 107 | 2.10.2 | 商品评论查看 | 1d | 2017-04-10 | 2017-04-11 | 106 | 12.5d | 0d |  | 刘飞 | 8h |
| 108 | 2.10.3 | 商品评论管理（屏蔽） | 3d | 2017-04-11 | 2017-04-14 | 107 | 12.5d | 0d |  | 刘飞 | 24h |
| 109 | 2.10.4 | 打分规则设置 | 2d | 2017-04-14 | 2017-04-17 | 108 | 12.5d | 0d |  | 刘飞 | 16h |
| 110 | 2.11 | **主面板信息优化** | 7d | 2017-04-17 | 2017-04-26 | 105 | 17d |  |  | 刘飞 | 112h |
| 111 | 2.11.1 | 用户登录信息 | 1.5d | 2017-04-17 | 2017-04-19 | 109 | 12.5d | 0d |  | 刘飞 | 12h |
| 112 | 2.11.2 | 待办事项 | 1.5d | 2017-04-19 | 2017-04-20 | 111 | 12.5d | 0d |  | 刘飞 | 12h |
| 113 | 2.11.3 | 统计数据展示 | 2d | 2017-04-20 | 2017-04-24 | 112 | 12.5d | 0d |  | 刘飞 | 16h |
| 114 | 2.11.4 | 数据分析展示面板 | 2d | 2017-04-24 | 2017-04-26 | 113 | 12.5d |  |  | 刘飞 | 16h |
| 115 | 2.12 | **搜索** | 9d | 2016-12-29 | 2017-01-11 |  |  |  |  | 文玉杰 | 136h |
| 116 | 2.12.1 | 首页搜索框（模糊搜索） | 2d | 2016-12-30 | 2017-01-04 |  | 0d |  | start no earlier than 2016-12-30 | 文玉杰 | 16h |
| 117 | 2.12.2 | 关键字搜索、组合搜索 | 4d | 2017-01-04 | 2017-01-09 | 116 | 0d |  |  | 文玉杰 | 32h |
| 118 | 2.12.3 | 搜索结果页面 | 2d | 2017-01-09 | 2017-01-11 | 117 | 0d |  |  | 文玉杰 | 16h |
| 119 | 2.13 | **蜂享购对接 （加入投资兑换）** | 5d | 2017-01-11 | 2017-01-18 | 115 | 16.5d | 0d |  | 文玉杰 | 80h |
| 120 | 2.13.1 | 商品详情页 0元购 | 2.5d | 2017-01-11 | 2017-01-13 |  | 12d | 0d |  | 文玉杰 | 20h |
| 121 | 2.13.2 | 0元购详情页 | 2.5d | 2017-01-13 | 2017-01-18 | 120 | 12d |  |  | 文玉杰 | 20h |
| 122 | 2.14 | **订单** | 13d | 2017-01-18 | 2017-02-09 | 119 | 16.5d | 0d |  | 文玉杰 | 208h |
| 123 | 2.14.1 | 我的订单 | 3d | 2017-01-18 | 2017-01-21 |  | 12d | 0d |  | 文玉杰 | 24h |
| 124 | 2.14.2 | 订单支付 | 2d | 2017-01-21 | 2017-01-24 | 123 | 12d | 0d |  | 文玉杰 | 16h |
| 125 | 2.14.3 | 订单评价（商品、店铺打分和文字评价） | 2.5d | 2017-01-24 | 2017-01-26 | 124 | 12d | 0d |  | 文玉杰 | 20h |
| 126 | 2.14.4 | 退款、退换货 | 2.5d | 2017-01-26 | 2017-02-06 | 125 | 12d | 0d |  | 文玉杰 | 20h |
| 127 | 2.14.5 | 订单回收站 | 1d | 2017-02-06 | 2017-02-07 | 126 | 12d | 0d |  | 文玉杰 | 8h |
| 128 | 2.14.6 | 订单物流跟踪 | 2d | 2017-02-07 | 2017-02-09 | 127 | 12d |  |  | 文玉杰 | 16h |

| ID | WBS | Task | Duration | Start | Finish | Predecessors | Total slack | Free slack | Resources | Work |
| --- | --- | --- | --- | --- | --- | --- | --- | --- | --- | --- |
| 129 | 2.15 | **购物车** | 5d | 2017-02-09 | 2017-02-16 | 122 | 16.5d | 0d | 文玉杰 | 80h |
| 130 | 2.15.1 | 购物车 | 3.5d | 2017-02-09 | 2017-02-14 |  | 12d | 0d | 文玉杰 | 28h |
| 131 | 2.15.2 | 购物车下拉的猜你喜欢商品列表 | 1.5d | 2017-02-14 | 2017-02-16 | 130 | 12d |  | 文玉杰 | 12h |
| 132 | 2.16 | **登录与注册** | 4d | 2017-02-16 | 2017-02-21 | 129 | 16.5d | 0d | 文玉杰 | 64h |
| 133 | 2.16.1 | 登录 | 1d | 2017-02-16 | 2017-02-17 |  | 12d | 0d | 文玉杰 | 8h |
| 134 | 2.16.2 | 注册 | 1d | 2017-02-17 | 2017-02-18 | 133 | 12d | 0d | 文玉杰 | 8h |
| 135 | 2.16.3 | 忘记密码 | 2d | 2017-02-18 | 2017-02-21 | 134 | 12d |  | 文玉杰 | 16h |
| 136 | 2.17 | **店铺** | 10d | 2017-02-21 | 2017-03-06 | 132 | 16.5d | 0d | 文玉杰 | 160h |
| 137 | 2.17.1 | 店铺展示 | 3d | 2017-02-21 | 2017-02-24 |  | 12d | 0d | 文玉杰 | 24h |
| 138 | 2.17.2 | 店铺客服 | 2.5d | 2017-02-24 | 2017-02-28 | 137 | 12d | 0d | 文玉杰 | 20h |
| 139 | 2.17.3 | 店铺收藏 | 2d | 2017-02-28 | 2017-03-02 | 138 | 12d | 0d | 文玉杰 | 16h |
| 140 | 2.17.4 | 店铺详情 | 2.5d | 2017-03-02 | 2017-03-06 | 139 | 12d |  | 文玉杰 | 20h |
| 141 | 2.18 | **促销&活动** | 16d | 2017-03-06 | 2017-03-27 | 136 | 16.5d | 0d | 文玉杰 | 256h |
| 142 | 2.18.1 | 省钱趴 | 3d | 2017-03-06 | 2017-03-09 |  | 12d | 0d | 文玉杰 | 24h |
| 143 | 2.18.2 | 限时购（秒杀） | 3d | 2017-03-09 | 2017-03-14 | 142 | 12d | 0d | 文玉杰 | 24h |
| 144 | 2.18.3 | 满减 （每满XX减XX） | 3d | 2017-03-14 | 2017-03-17 | 143 | 12d | 0d | 文玉杰 | 24h |
| 145 | 2.18.4 | 满赠 （结合优惠券） | 3d | 2017-03-17 | 2017-03-21 | 144 | 12d | 0d | 文玉杰 | 24h |
| 146 | 2.18.5 | 团购 | 4d | 2017-03-21 | 2017-03-27 | 145 | 12d |  | 文玉杰 | 32h |
| 147 | 3 | **后台管理** | 25d | 2017-03-27 | 2017-04-27 |  | 16.5d |  | 文玉杰 | 600h |
| 148 | 3.1 | **促销&活动管理优化** | 9d | 2017-03-27 | 2017-04-06 | 141 | 16.5d | 0d | 文玉杰 | 144h |
| 149 | 3.1.1 | 活动管理方式界面优化 | 2d | 2017-03-27 | 2017-03-29 |  | 12d | 0d | 文玉杰 | 16h |
| 150 | 3.1.2 | 满减（每满XX减XX）配置 | 2d | 2017-03-29 | 2017-03-31 | 149 | 12d | 0d | 文玉杰 | 16h |
| 151 | 3.1.3 | 满赠配置（结合优惠券） | 2.5d | 2017-03-31 | 2017-04-03 | 150 | 12d | 0d | 文玉杰 | 20h |
| 152 | 3.1.4 | 团购配置 | 2.5d | 2017-04-03 | 2017-04-06 | 151 | 12d |  | 文玉杰 | 20h |

| ID | WBS | Task | Duration | Start | Finish | Predecessors | Total slack | Free slack | Constraint | Resources | Work |
| --- | --- | --- | --- | --- | --- | --- | --- | --- | --- | --- | --- |
| 153 | 3.2 | **网站管理** | 9.5d | 2017-04-06 | 2017-04-18 | 148 | 16.5d | 0d |  | 文玉杰 | 152h |
| 154 | 3.2.1 | 文章分类 | 1.5d | 2017-04-06 | 2017-04-07 |  | 12d | 0d |  | 文玉杰 | 12h |
| 155 | 3.2.2 | 文章管理 | 2d | 2017-04-07 | 2017-04-11 | 154 | 12d | 0d |  | 文玉杰 | 16h |
| 156 | 3.2.3 | 广告管理 | 1.5d | 2017-04-11 | 2017-04-13 | 155 | 12d | 0d |  | 文玉杰 | 12h |
| 157 | 3.2.4 | 首页管理 | 1.5d | 2017-04-13 | 2017-04-14 | 156 | 12d | 0d |  | 文玉杰 | 12h |
| 158 | 3.2.5 | 导航管理 | 1.5d | 2017-04-14 | 2017-04-17 | 157 | 12d | 0d |  | 文玉杰 | 12h |
| 159 | 3.2.6 | 友情链接管理 | 1.5d | 2017-04-17 | 2017-04-18 | 158 | 12d |  |  | 文玉杰 | 12h |
| 160 | 3.3 | **会员系统** | 6.5d | 2017-04-18 | 2017-04-27 | 153 | 16.5d |  |  | 文玉杰 | 104h |
| 161 | 3.3.1 | 会员等级设置 | 2d | 2017-04-18 | 2017-04-20 |  | 12d | 0d |  | 文玉杰 | 16h |
| 162 | 3.3.2 | 会员成长值规则设置 | 2.5d | 2017-04-20 | 2017-04-25 | 161 | 12d | 0d |  | 文玉杰 | 20h |
| 163 | 3.3.3 | 乐币设置 | 2d | 2017-04-25 | 2017-04-27 | 162 | 12d |  |  | 文玉杰 | 16h |
| 164 | 4 | **他她乐PC端接口** | 106.5d | 2016-12-26 | 2017-05-17 |  | 0d |  |  | 李丁; 杨忠卫 | 6432h |
| 165 | 4.1 | **重新编写2.0前台所有接口（PC）** | 23d | 2017-02-07 | 2017-03-08 |  | 2d |  |  | 李丁; 杨忠卫 | 1056h |
| 166 | 4.1.1 | **登陆注册相关接口** | 5d | 2017-02-07 | 2017-02-14 |  | 51d | 0d |  | 李丁 | 80h |
| 167 | 4.1.1.1 | 登陆接口重写及测试 | 1d | 2017-02-07 | 2017-02-08 |  | 51d | 0d | start no earlier than 2017-02-07 | 李丁 | 8h |
| 168 | 4.1.1.2 | 注册接口重写及测试 | 1d | 2017-02-08 | 2017-02-09 | 167 | 51d | 0d |  | 李丁 | 8h |
| 169 | 4.1.1.3 | 忘记密码接口重写及测试 | 1d | 2017-02-09 | 2017-02-10 | 168 | 51d | 0d |  | 李丁 | 8h |
| 170 | 4.1.1.4 | 发送短信及验证码相关接口 | 2d | 2017-02-10 | 2017-02-14 | 169 | 51d |  |  | 李丁 | 16h |
| 171 | 4.1.2 | **app首页接口** | 8d | 2017-02-14 | 2017-02-23 | 166, 169 | 55.5d | 0d |  | 李丁 | 128h |
| 172 | 4.1.2.1 | 首页轮播图接口重写及测试 | 1d | 2017-02-14 | 2017-02-15 |  | 51d | 0d |  | 李丁 | 8h |
| 173 | 4.1.2.2 | 新品抢先接口重写及测试 | 1d | 2017-02-15 | 2017-02-16 | 172 | 51d | 0d |  | 李丁 | 8h |
| 174 | 4.1.2.3 | 省钱趴接口重写及测试 | 1d | 2017-02-16 | 2017-02-17 | 173 | 51d | 0d |  | 李丁 | 8h |
| 175 | 4.1.2.4 | 每日上线接口重写及测试 | 1d | 2017-02-17 | 2017-02-18 | 174 | 51d | 0d |  | 李丁 | 8h |
| 176 | 4.1.2.5 | 超实惠接口重写及测试 | 1d | 2017-02-18 | 2017-02-20 | 175 | 51d | 0d |  | 李丁 | 8h |
| 177 | 4.1.2.6 | 大牌秀接口重写及测试 | 1d | 2017-02-20 | 2017-02-21 | 176 | 51d | 0d |  | 李丁 | 8h |
| 178 | 4.1.2.7 | 特色好货接口重写及测试 | 1d | 2017-02-21 | 2017-02-22 | 177 | 51d | 0d |  | 李丁 | 8h |
| 179 | 4.1.2.8 | 为你推荐接口重写及测试 | 1d | 2017-02-22 | 2017-02-23 | 178 | 51d | 0d |  | 李丁 | 8h |

| ID | WBS | Task | Duration | Start | Finish | Predecessors | Total slack | Free slack | Resources | Work |
| --- | --- | --- | --- | --- | --- | --- | --- | --- | --- | --- |
| 180 | 4.1.3 | **专题活动页面接口** | 5d | 2017-02-23 | 2017-03-02 | 171, 179 | 55.5d | 0d | 李丁 | 80h |
| 181 | 4.1.3.1 | 活动页面商品展示接口重写及测试 | 2d | 2017-02-23 | 2017-02-27 |  | 51d | 0d | 李丁 | 16h |
| 182 | 4.1.3.2 | 秒杀与限时抢活动相关接口 | 2d | 2017-02-27 | 2017-03-01 | 181 | 51d | 0d | 李丁 | 16h |
| 183 | 4.1.3.3 | 活动页面按字段排序接口重写及测试 | 1d | 2017-03-01 | 2017-03-02 | 181, 182 | 51d |  | 李丁 | 8h |
| 184 | 4.1.4 | **分类接口** | 3d | 2017-03-02 | 2017-03-06 | 180 | 55.5d | 0d | 李丁 | 48h |
| 185 | 4.1.4.1 | 分类展示接口 | 2d | 2017-03-02 | 2017-03-04 |  | 51d | 0d | 李丁 | 16h |
| 186 | 4.1.4.2 | 跨境专区分类特别展示接口 | 1d | 2017-03-04 | 2017-03-06 | 185 | 51d |  | 李丁 | 8h |
| 187 | 4.1.5 | **搜索接口** | 2d | 2017-03-06 | 2017-03-08 | 184 | 55.5d |  | 李丁 | 32h |
| 188 | 4.1.5.1 | 首页搜索查询接口 | 1d | 2017-03-06 | 2017-03-07 |  | 51d | 0d | 李丁 | 8h |
| 189 | 4.1.5.2 | 类目下搜索查询接口 | 1d | 2017-03-07 | 2017-03-08 | 188 | 51d |  | 李丁 | 8h |
| 190 | 4.1.6 | **商品列表页相关接口** | 7d | 2017-02-09 | 2017-02-18 |  |  |  | 杨忠卫 | 112h |
| 191 | 4.1.6.1 | 商品列表展示及分页接口 | 1d | 2017-02-09 | 2017-02-10 |  | 0d |  | 杨忠卫 | 8h |
| 192 | 4.1.6.2 | 商品详情页相关接口 | 1d | 2017-02-10 | 2017-02-13 | 191 | 0d |  | 杨忠卫 | 8h |
| 193 | 4.1.6.3 | 商品基础信息相关接口 | 1d | 2017-02-13 | 2017-02-14 | 192 | 0d |  | 杨忠卫 | 8h |
| 194 | 4.1.6.4 | 商品参数选择及库存数量相关接口 | 1d | 2017-02-14 | 2017-02-15 | 193 | 0d |  | 杨忠卫 | 8h |
| 195 | 4.1.6.5 | 商品参与活动及优惠金额相关接口 | 1d | 2017-02-15 | 2017-02-16 | 194 | 0d |  | 杨忠卫 | 8h |
| 196 | 4.1.6.6 | 商品主副图片轮播展示相关接口 | 0.5d | 2017-02-16 | 2017-02-16 | 195 | 0d |  | 杨忠卫 | 4h |
| 197 | 4.1.6.7 | 商品详细介绍相关接口 | 0.5d | 2017-02-16 | 2017-02-17 | 196 | 0d |  | 杨忠卫 | 4h |
| 198 | 4.1.6.8 | 商品跳转至订单结算相关接口 | 0.5d | 2017-02-17 | 2017-02-17 | 197 | 0d |  | 杨忠卫 | 4h |
| 199 | 4.1.6.9 | 商品售后信息相关接口 | 0.5d | 2017-02-17 | 2017-02-18 | 198 | 0d |  | 杨忠卫 | 4h |
| 200 | 4.1.7 | **购物车相关接口** | 3d | 2017-02-18 | 2017-02-22 | 190, 199 | 56.5d | 0d | 杨忠卫 | 48h |
| 201 | 4.1.7.1 | 购物车权限控制 | 1d | 2017-02-18 | 2017-02-20 |  | 52d | 0d | 杨忠卫 | 8h |
| 202 | 4.1.7.2 | 购物车加入功能 | 0.5d | 2017-02-20 | 2017-02-20 | 201 | 52d | 0d | 杨忠卫 | 4h |
| 203 | 4.1.7.3 | 购物车编辑相关功能 | 0.5d | 2017-02-20 | 2017-02-21 | 202 | 52d | 0d | 杨忠卫 | 4h |
| 204 | 4.1.7.4 | 购物车下推荐商品相关接口 | 0.5d | 2017-02-21 | 2017-02-21 | 203 | 52d | 0d | 杨忠卫 | 4h |
| 205 | 4.1.7.5 | 购物车跳转至订单页相关接口 | 0.5d | 2017-02-21 | 2017-02-22 | 204 | 52d |  | 杨忠卫 | 4h |

| ID | WBS | Task | Duration | Start | Finish | Predecessors | Total slack | Free slack | Constraint | Resources | Work |
| --- | --- | --- | --- | --- | --- | --- | --- | --- | --- | --- | --- |
| 206 | 4.1.8 | **订单相关接口** | 7.5d | 2017-02-22 | 2017-03-03 | 200 | 56.5d | 0d |  | 杨忠卫 | 120h |
| 207 | 4.1.8.1 | 订单结算页相关接口 | 1d | 2017-02-22 | 2017-02-23 |  | 52d | 0d |  | 杨忠卫 | 8h |
| 208 | 4.1.8.2 | 查看订单相关接口 | 1d | 2017-02-23 | 2017-02-24 | 207 | 52d | 0d |  | 杨忠卫 | 8h |
| 209 | 4.1.8.3 | 订单查询物流相关接口 | 1d | 2017-02-24 | 2017-02-27 | 208 | 52d | 0d |  | 杨忠卫 | 8h |
| 210 | 4.1.8.4 | 支付订单接口 | 2d | 2017-02-27 | 2017-03-01 | 209 | 52d | 0d |  | 杨忠卫 | 16h |
| 211 | 4.1.8.5 | 订单退换货相关接口 | 1.5d | 2017-03-01 | 2017-03-02 | 210 | 52d | 0d |  | 杨忠卫 | 12h |
| 212 | 4.1.8.6 | 订单确认相关接口 | 0.5d | 2017-03-02 | 2017-03-03 | 211 | 52d | 0d |  | 杨忠卫 | 4h |
| 213 | 4.1.8.7 | 确认收货相关接口 | 0.5d | 2017-03-03 | 2017-03-03 | 212 | 52d |  |  | 杨忠卫 | 4h |
| 214 | 4.1.9 | **地址管理相关接口** | 2.5d | 2017-03-03 | 2017-03-07 | 206 | 56.5d |  |  | 杨忠卫 | 40h |
| 215 | 4.1.9.1 | 新增地址相关接口 | 0.5d | 2017-03-03 | 2017-03-04 |  | 52d | 0d |  | 杨忠卫 | 4h |
| 216 | 4.1.9.2 | 修改地址相关接口 | 0.5d | 2017-03-04 | 2017-03-04 | 215 | 52d | 0d |  | 杨忠卫 | 4h |
| 217 | 4.1.9.3 | 删除地址相关接口 | 0.5d | 2017-03-04 | 2017-03-06 | 216 | 52d | 0d |  | 杨忠卫 | 4h |
| 218 | 4.1.9.4 | 默认地址设置相关接口 | 0.5d | 2017-03-06 | 2017-03-06 | 217 | 52d | 0d |  | 杨忠卫 | 4h |
| 219 | 4.1.9.5 | 地址与订单关联接口 | 0.5d | 2017-03-06 | 2017-03-07 | 218 | 52d |  |  | 杨忠卫 | 4h |
| 220 | 4.2 | **站点设置** | 4d | 2017-03-09 | 2017-03-15 |  |  |  |  | 李丁 | 64h |
| 221 | 4.2.1 | 新增站点功能实现功能实现及测试 | 1.5d | 2017-03-09 | 2017-03-10 |  | 0d |  | start no earlier than 2017-03-09 | 李丁 | 12h |
| 222 | 4.2.2 | 站点列表维护功能实现及测试 | 2.5d | 2017-03-10 | 2017-03-15 | 221 | 0d |  |  | 李丁 | 20h |
| 223 | 4.3 | **行政地区设置** | 2d | 2017-03-15 | 2017-03-17 | 220 | 16d | 0d |  | 李丁 | 32h |
| 224 | 4.3.1 | 一级地区管理功能实现及测试 | 0.5d | 2017-03-15 | 2017-03-15 |  | 11.5d | 0d |  | 李丁 | 4h |
| 225 | 4.3.2 | 二级地区管理功能实现及测试 | 0.5d | 2017-03-15 | 2017-03-16 | 224 | 11.5d | 0d |  | 李丁 | 4h |
| 226 | 4.3.3 | 三级地区管理功能实现及测试 | 0.5d | 2017-03-16 | 2017-03-16 | 225 | 11.5d | 0d |  | 李丁 | 4h |
| 227 | 4.3.4 | 四级地区管理功能实现及测试 | 0.5d | 2017-03-16 | 2017-03-17 | 226 | 11.5d |  |  | 李丁 | 4h |
| 228 | 4.4 | **物流配送优化** | 6d | 2017-03-17 | 2017-03-24 | 223 | 16d | 0d |  | 李丁 | 96h |
| 229 | 4.4.1 | 配送模板管理功能实现及测试 | 3.5d | 2017-03-17 | 2017-03-21 |  | 11.5d | 0d |  | 李丁 | 28h |
| 230 | 4.4.2 | 区域配送管理功能实现及测试 | 2.5d | 2017-03-21 | 2017-03-24 | 229 | 11.5d |  |  | 李丁 | 20h |

| ID | WBS | Task | Duration | Start | Finish | Predecessors | Total slack | Free slack | Constraint | Resources | Work |
| --- | --- | --- | --- | --- | --- | --- | --- | --- | --- | --- | --- |
| 231 | 4.5 | **文章分类** | 3d | 2017-03-24 | 2017-03-29 | 228 | 16d | 0d |  | 李丁 | 48h |
| 232 | 4.5.1 | 增加分类功能实现及测试 | 1.5d | 2017-03-24 | 2017-03-27 |  | 11.5d | 0d |  | 李丁 | 12h |
| 233 | 4.5.2 | 文章分类列表管理功能实现及测试 | 1.5d | 2017-03-27 | 2017-03-29 | 232 | 11.5d |  |  | 李丁 | 12h |
| 234 | 4.6 | **文章管理** | 5d | 2017-03-29 | 2017-04-04 | 231 | 16d | 0d |  | 李丁 | 80h |
| 235 | 4.6.1 | 新增文章功能实现及测试 | 2.5d | 2017-03-29 | 2017-03-31 |  | 11.5d | 0d |  | 李丁 | 20h |
| 236 | 4.6.2 | 文章列表管理功能实现及测试 | 2.5d | 2017-03-31 | 2017-04-04 | 235 | 11.5d |  |  | 李丁 | 20h |
| 237 | 4.7 | **广告管理** | 4.5d | 2017-04-04 | 2017-04-10 | 234 | 16d | 0d |  | 李丁 | 72h |
| 238 | 4.7.1 | 增加广告位功能实现及测试 | 2d | 2017-04-04 | 2017-04-06 |  | 11.5d | 0d |  | 李丁 | 16h |
| 239 | 4.7.2 | 广告位列表管理功能实现及测试 | 2.5d | 2017-04-06 | 2017-04-10 | 238 | 11.5d |  |  | 李丁 | 20h |
| 240 | 4.8 | **首页管理** | 5d | 2017-04-10 | 2017-04-15 | 237 | 16d | 0d |  | 李丁 | 80h |
| 241 | 4.8.1 | 增加栏目功能实现及测试 | 2d | 2017-04-10 | 2017-04-12 |  | 11.5d | 0d |  | 李丁 | 16h |
| 242 | 4.8.2 | 栏目列表维护功能实现及测试 | 3d | 2017-04-12 | 2017-04-15 | 241 | 11.5d |  |  | 李丁 | 24h |
| 243 | 4.9 | **导航管理** | 5d | 2017-04-15 | 2017-04-21 | 240 | 16d | 0d |  | 李丁 | 80h |
| 244 | 4.9.1 | 增加导航功能实现及测试 | 2d | 2017-04-15 | 2017-04-18 |  | 11.5d | 0d |  | 李丁 | 16h |
| 245 | 4.9.2 | 导航列表维护功能实现及测试 | 3d | 2017-04-18 | 2017-04-21 | 244 | 11.5d |  |  | 李丁 | 24h |
| 246 | 4.10 | **友情链接管理** | 4d | 2017-04-21 | 2017-04-27 | 243 | 16d |  |  | 李丁 | 64h |
| 247 | 4.10.1 | 增加友情链接功能实现及测试 | 2d | 2017-04-21 | 2017-04-25 |  | 11.5d | 0d |  | 李丁 | 16h |
| 248 | 4.10.2 | 友情链接列表维护功能实现及测试 | 2d | 2017-04-25 | 2017-04-27 | 247 | 11.5d |  |  | 李丁 | 16h |
| 249 | 4.11 | **商品评价** | 9.5d | 2016-12-26 | 2017-01-07 |  | 0d |  |  | 胡东 | 152h |
| 250 | 4.11.1 | 商品评价功能 | 3d | 2016-12-26 | 2016-12-29 |  | -9.5d | 0d | start no earlier than 2016-12-26 | 胡东 | 24h |
| 251 | 4.11.2 | 商品评价图片上传功能 | 2d | 2016-12-29 | 2017-01-03 | 250 | -9.5d | 0d |  | 胡东 | 16h |
| 252 | 4.11.3 | 评价审核 | 2.5d | 2017-01-03 | 2017-01-05 | 251 | -9.5d | 0d |  | 胡东 | 20h |
| 253 | 4.11.4 | 评价查询功能 | 2d | 2017-01-05 | 2017-01-07 | 252 | -9.5d | 0d |  | 胡东 | 16h |
| 254 | 4.12 | **订单管理** | 23d | 2017-01-07 | 2017-02-10 |  |  |  |  | 胡东 | 360h |
| 255 | 4.12.1 | 多状态订单查询 | 3d | 2017-01-07 | 2017-01-11 | 253 | -9.5d | 0d |  | 胡东 | 24h |
| 256 | 4.12.2 | 多状态订单统计 | 3d | 2017-01-11 | 2017-01-16 | 255 | -9.5d | 0d |  | 胡东 | 24h |
| 257 | 4.12.3 | 订单详情查看 | 3d | 2017-01-16 | 2017-01-19 | 256 | -9.5d | 0d |  | 胡东 | 24h |
| 258 | 4.12.4 | 订单取消\删除\收货功能 | 3d | 2017-01-19 | 2017-01-23 | 257 | -9.5d | 0d |  | 胡东 | 24h |
| 259 | 4.12.5 | 查看物流功能 | 2.5d | 2017-01-23 | 2017-01-26 | 258 | -9.5d | 0d |  | 胡东 | 20h |
| 260 | 4.12.6 | 订单回收站 | 2.5d | 2017-01-26 | 2017-02-04 | 259 | -9.5d | 0d |  | 胡东 | 20h |
| 261 | 4.12.7 | 订单活动加优惠券计算规则 | 5d | 2017-02-04 | 2017-02-10 | 259, 260 | -9.5d | 0d |  | 胡东 | 40h |

| ID | WBS | Task | Duration | Start | Finish | Predecessors | Total slack | Free slack | Constraint | Resources | Work |
| --- | --- | --- | --- | --- | --- | --- | --- | --- | --- | --- | --- |
| 262 | 4.13 | **地址管理** | 4d | 2017-02-10 | 2017-02-16 | 261 | 0d |  |  | 胡东 | 64h |
| 263 | 4.13.1 | 新增地址 | 2d | 2017-02-10 | 2017-02-14 |  | 0d |  |  | 胡东 | 16h |
| 264 | 4.13.2 | 编辑、修改、删除地址 | 2d | 2017-02-14 | 2017-02-16 | 263 | 0d |  |  | 胡东 | 16h |
| 265 | 4.14 | **优惠券功能app和pc** | 23d | 2017-02-16 | 2017-03-17 | 262 | 0d |  |  | 胡东 | 368h |
| 266 | 4.14.1 | 创建多种类型优惠券 | 5d | 2017-02-16 | 2017-02-22 |  | 0d |  |  | 胡东 | 40h |
| 267 | 4.14.2 | 优惠券领券 | 4d | 2017-02-22 | 2017-02-28 | 266 | 0d |  |  | 胡东 | 32h |
| 268 | 4.14.3 | 优惠券使用功能 | 3d | 2017-02-28 | 2017-03-03 | 267 | 0d |  |  | 胡东 | 24h |
| 269 | 4.14.4 | 优惠券订单计算价格功能 | 5d | 2017-03-03 | 2017-03-09 | 268 | 0d |  |  | 胡东 | 40h |
| 270 | 4.14.5 | 满赠功能 | 6d | 2017-03-09 | 2017-03-17 | 269 | 0d |  |  | 胡东 | 48h |
| 271 | 4.15 | **供应商管理** | 4d | 2017-03-17 | 2017-03-22 | 265 | 0d |  |  | 胡东 | 64h |
| 272 | 4.15.1 | 供应商维护 | 2d | 2017-03-17 | 2017-03-20 |  | 0d |  |  | 胡东 | 16h |
| 273 | 4.15.2 | 供应商编辑、修改、删除功能 | 2d | 2017-03-20 | 2017-03-22 | 272 | 0d |  |  | 胡东 | 16h |
| 274 | 4.16 | **拆单功能app和pc** | 6d | 2017-03-22 | 2017-03-30 | 271 | 0d |  |  | 胡东 | 96h |
| 275 | 4.16.1 | 根据供应商进行拆单 | 3d | 2017-03-22 | 2017-03-27 |  | 0d |  |  | 胡东 | 24h |
| 276 | 4.16.2 | 优化订单功能 | 3d | 2017-03-27 | 2017-03-30 | 275 | 0d |  |  | 胡东 | 24h |
| 277 | 4.17 | **优化及其他功能** | 13d | 2017-03-30 | 2017-04-15 | 276 | 0d |  |  | 胡东 | 208h |
| 278 | 4.17.1 | 商品批量导入功能 | 3d | 2017-03-30 | 2017-04-03 |  | 0d |  |  | 胡东 | 24h |
| 279 | 4.17.2 | 订单号生成规则优化 | 5d | 2017-04-03 | 2017-04-10 | 278 | 0d |  |  | 胡东 | 40h |
| 280 | 4.17.3 | 秒杀功能优化解决爆库存问题 | 5d | 2017-04-10 | 2017-04-15 | 279 | 0d |  |  | 胡东 | 40h |
| 281 | 4.18 | **钱包管理** | 25d | 2017-04-15 | 2017-05-17 | 280 | 0d |  |  | 杨绍振; 胡东 | 808h |
| 282 | 4.18.1 | 收支明细 | 3d | 2017-04-15 | 2017-04-19 |  | 0d |  |  | 胡东 | 24h |
| 283 | 4.18.2 | 充值明细 | 3d | 2017-04-19 | 2017-04-24 | 282 | 0d |  |  | 胡东 | 24h |
| 284 | 4.18.3 | 充值功能 | 4d | 2017-04-24 | 2017-04-28 | 283 | 0d |  |  | 胡东 | 32h |
| 285 | 4.18.4 | 短信验证支付功能 | 4d | 2017-04-15 | 2017-04-20 |  | 3d | 0d | start no earlier than 2017-04-08 | 胡东 | 32h |
| 286 | 4.18.5 | 银行卡绑定 | 4d | 2017-04-20 | 2017-04-26 | 285 | 12d | 0d |  | 胡东 | 32h |
| 287 | 4.18.6 | 支付密码设置及找回功能 | 5d | 2017-04-26 | 2017-05-02 | 286 | 12d |  |  | 胡东 | 40h |
| 288 | 4.18.7 | 钱包支付 | 5d | 2017-04-28 | 2017-05-04 | 284 | 0d |  |  | 杨绍振 | 40h |
| 289 | 4.18.8 | 提现功能 | 5d | 2017-05-04 | 2017-05-11 | 288 | 5d |  |  | 杨绍振 | 40h |
| 290 | 4.18.9 | 快捷支付功能相关实现 | 8d | 2017-04-20 | 2017-05-01 | 285 | 3d |  |  | 杨绍振 | 64h |
| 291 | 4.18.10 | 钱包资金安全相关设置 | 10d | 2017-05-04 | 2017-05-17 | 288, 290 | 0d |  |  | 杨绍振 | 80h |

| ID | WBS | Task | Duration | Start | Finish | Predecessors | Total slack | Free slack | Constraint | Resources | Work |
| --- | --- | --- | --- | --- | --- | --- | --- | --- | --- | --- | --- |
| 292 | 4.19 | **会员等级设置** | 8.5d | 2017-02-10 | 2017-02-21 |  |  |  |  | 杨忠卫 | 136h |
| 293 | 4.19.1 | 会员等级设置 | 1.5d | 2017-02-08 | 2017-02-09 |  | 1796.5d | 0d | start no earlier than 2017-02-08 | 杨忠卫 | 12h |
| 294 | 4.19.2 | 会员积分赠送规则 | 2d | 2017-02-10 | 2017-02-14 | 293 | 1.5d | 0d |  | 杨忠卫 | 16h |
| 295 | 4.19.3 | 会员积分清零设置 | 2d | 2017-02-14 | 2017-02-16 | 294 | 1.5d | 0d |  | 杨忠卫 | 16h |
| 296 | 4.19.4 | 会员等级优惠设置 | 3d | 2017-02-16 | 2017-02-20 | 293, 295 | 1.5d |  |  | 杨忠卫 | 24h |
| 297 | 4.20 | **乐币设置** | 16d | 2017-02-21 | 2017-03-14 | 292 | 15d | 0d |  | 杨忠卫 | 256h |
| 298 | 4.20.1 | 乐币设置 | 2d | 2017-02-21 | 2017-02-23 |  | 10.5d | 0d |  | 杨忠卫 | 16h |
| 299 | 4.20.2 | 乐币消费规则 | 3d | 2017-02-23 | 2017-02-28 | 298 | 10.5d | 0d |  | 杨忠卫 | 24h |
| 300 | 4.20.3 | 乐币抵扣规则 | 4d | 2017-02-28 | 2017-03-04 | 299 | 10.5d | 0d |  | 杨忠卫 | 32h |
| 301 | 4.20.4 | 取消订单乐币退还规则 | 3d | 2017-03-04 | 2017-03-08 | 300 | 10.5d | 0d |  | 杨忠卫 | 24h |
| 302 | 4.20.5 | 乐币赠送相关接口 | 4d | 2017-03-08 | 2017-03-14 | 301 | 10.5d |  |  | 杨忠卫 | 32h |
| 303 | 4.21 | **用户登录信息** | 10d | 2017-03-14 | 2017-03-27 | 297 | 15d | 0d |  | 杨忠卫 | 160h |
| 304 | 4.21.1 | 用户登录个人资料信息 | 2d | 2017-03-14 | 2017-03-16 |  | 10.5d | 0d |  | 杨忠卫 | 16h |
| 305 | 4.21.2 | 用户上传个人图片信息 | 1.5d | 2017-03-16 | 2017-03-18 | 304 | 10.5d | 0d |  | 杨忠卫 | 12h |
| 306 | 4.21.3 | 用户积分成长情况展示 | 2d | 2017-03-18 | 2017-03-21 | 305 | 10.5d | 0d |  | 杨忠卫 | 16h |
| 307 | 4.21.4 | 用户乐币使用情况详情 | 2.5d | 2017-03-21 | 2017-03-23 | 306 | 10.5d | 0d |  | 杨忠卫 | 20h |
| 308 | 4.21.5 | 用户代办事项 | 2d | 2017-03-23 | 2017-03-27 | 307 | 10.5d |  |  | 杨忠卫 | 16h |
| 309 | 4.22 | **待办事项** | 4.5d | 2017-03-27 | 2017-04-01 | 303 | 15d | 0d |  | 杨忠卫 | 72h |
| 310 | 4.22.1 | 后台待办事项资料展示 | 2d | 2017-03-27 | 2017-03-29 |  | 10.5d | 0d |  | 杨忠卫 | 16h |
| 311 | 4.22.2 | 待办事项业务处理 | 2.5d | 2017-03-29 | 2017-04-01 | 310 | 10.5d |  |  | 杨忠卫 | 20h |
| 312 | 4.23 | **统计数据** | 7d | 2017-04-01 | 2017-04-11 | 309 | 15d | 0d |  | 杨忠卫 | 112h |
| 313 | 4.23.1 | 统计数据展示 | 2.5d | 2017-04-01 | 2017-04-04 |  | 10.5d | 0d |  | 杨忠卫 | 20h |
| 314 | 4.23.2 | 数据分析展示面板 | 2.5d | 2017-04-04 | 2017-04-07 | 313 | 10.5d | 0d |  | 杨忠卫 | 20h |
| 315 | 4.23.3 | 统计数据导出功能 | 2d | 2017-04-07 | 2017-04-11 | 314 | 10.5d | 0d |  | 杨忠卫 | 16h |
| 316 | 4.24 | 关键字搜索、组合搜索 | 4d | 2017-04-11 | 2017-04-15 | 315, 312 | 10.5d | 0d |  | 杨忠卫 | 32h |

| ID | WBS | Task | Duration | Start | Finish | Predecessors | Total slack | Free slack | Resources | Work |
| --- | --- | --- | --- | --- | --- | --- | --- | --- | --- | --- |
| 317 | 4.25 | **商品支持及售后** | 10.5d | 2017-04-15 | 2017-04-28 | 316 | 15d |  | 杨忠卫 | 168h |
| 318 | 4.25.1 | 售后信息资料录入 | 1d | 2017-04-15 | 2017-04-17 |  | 10.5d | 0d | 杨忠卫 | 8h |
| 319 | 4.25.2 | 售后信息资料及图片上传 | 1d | 2017-04-17 | 2017-04-18 | 318 | 10.5d | 0d | 杨忠卫 | 8h |
| 320 | 4.25.3 | 售后信息前台展示相关接口 | 1.5d | 2017-04-18 | 2017-04-19 | 319 | 10.5d | 0d | 杨忠卫 | 12h |
| 321 | 4.25.4 | 申请单查询 | 1d | 2017-04-19 | 2017-04-20 | 320 | 10.5d | 0d | 杨忠卫 | 8h |
| 322 | 4.25.5 | 售后单申请 | 2d | 2017-04-20 | 2017-04-24 | 321 | 10.5d | 0d | 杨忠卫 | 16h |
| 323 | 4.25.6 | 售后进度 | 2d | 2017-04-24 | 2017-04-26 | 322 | 10.5d | 0d | 杨忠卫 | 16h |
| 324 | 4.25.7 | 物流功能 | 2d | 2017-04-26 | 2017-04-28 | 323 | 10.5d |  | 杨忠卫 | 16h |
